# Industrial Plant Expansion - Phase 2 (Demo)

How a schedule from Primavera P6 changed from version to version. A marks actual dates.

## Version 1 (data date 2026-09-01, saved 2026-09-26)

Note of the change: Add Schedule Engine: offline P6-style monthly schedule updater

| ID | WBS | Task | Duration | Start | Finish | Predecessors | Complete | Total float | Constraint |
| --- | --- | --- | --- | --- | --- | --- | --- | --- | --- |
|  | GEN | **Project Milestones** |  | 2026-01-05 | 2027-05-31 |  |  |  |  |
| MS-1000 |  | Notice to proceed / Project start | 0d | 2026-01-05 A | 2026-01-05 A |  | 100% |  | start on or after 2026-01-05 |
| MS-9000 |  | Plant mechanical completion | 0d | 2027-05-31 | 2027-05-31 | ADM-C1190, MPB-C1190, WHS-C1190, SUB-C1190, UTL-C1190, STP-C1190 |  | 0d |  |
|  | ADM | **Admin Building** |  | 2026-01-08 | 2026-10-21 |  |  |  |  |
|  | ADM.E | **Engineering** |  | 2026-01-08 | 2026-04-14 |  |  |  |  |
| ADM-E1010 |  | Design basis & architectural layout | 19d | 2026-01-08 A | 2026-02-10 A | MS-1000 | 100% |  |  |
| ADM-E1020 |  | Structural design & IFC drawings | 34d | 2026-01-21 A | 2026-03-20 A | ADM-E1010 SS+5d | 100% |  |  |
| ADM-E1030 |  | MEP design & drawings | 36d | 2026-02-17 A | 2026-04-14 A | ADM-E1010 | 100% |  |  |
| ADM-E1040 |  | Drawing approval by client | 10d | 2026-03-24 A | 2026-04-14 A | ADM-E1020, ADM-E1030 FF | 100% |  |  |
|  | ADM.P | **Procurement** |  | 2026-03-25 | 2026-07-31 |  |  |  |  |
| ADM-P1050 |  | Structural steel - PO placement | 11d | 2026-03-25 A | 2026-04-07 A | ADM-E1020 | 100% |  |  |
| ADM-P1060 |  | Structural steel - fabrication & supply to site | 58d | 2026-04-13 A | 2026-07-01 A | ADM-P1050 | 100% |  |  |
| ADM-P1070 |  | MEP equipment - PO placement | 13d | 2026-04-15 A | 2026-04-28 A | ADM-E1030 | 100% |  |  |
| ADM-P1080 |  | MEP equipment - manufacturing & delivery | 70d | 2026-05-04 A | 2026-07-31 A | ADM-P1070 | 100% |  |  |
|  | ADM.C | **Construction** |  | 2026-01-08 | 2026-10-21 |  |  |  |  |
| ADM-C1090 |  | Site mobilisation & survey | 5d | 2026-01-08 A | 2026-01-14 A | MS-1000 | 100% |  |  |
| ADM-C1100 |  | Excavation | 17d | 2026-02-04 A | 2026-02-26 A | ADM-C1090, ADM-E1020 SS+10d | 100% |  |  |
| ADM-C1110 |  | PCC & foundation concreting | 30d | 2026-02-14 A | 2026-03-26 A | ADM-C1100 SS+7d | 100% |  |  |
| ADM-C1120 |  | Plinth beam & backfilling | 20d | 2026-03-28 A | 2026-04-23 A | ADM-C1110 | 100% |  |  |
| ADM-C1130 |  | Superstructure - RCC / steel erection | 54d | 2026-05-01 A | 2026-07-13 A | ADM-C1120, ADM-P1060 SS+15d | 100% |  |  |
| ADM-C1150 |  | Masonry & plastering | 37d | 2026-05-29 A | 2026-07-11 A | ADM-C1130 SS+20d | 100% |  |  |
| ADM-C1140 |  | Roofing & cladding | 21d | 2026-07-13 A | 2026-08-03 A | ADM-C1130 FS-5d | 100% |  |  |
| ADM-C1160 |  | MEP installation | 48d | 2026-08-04 A | 2026-10-03 | ADM-C1150 SS+10d, ADM-P1080 | 42% | 186d |  |
| ADM-C1170 |  | Finishes - flooring & painting | 40d | 2026-08-05 A | 2026-09-28 | ADM-C1150, ADM-C1140 | 53% | 204d |  |
| ADM-C1180 |  | Testing & commissioning | 14d | 2026-10-05 | 2026-10-21 | ADM-C1160, ADM-C1170 FF |  | 186d |  |
| ADM-C1190 |  | Building handover to client | 0d | 2026-10-21 | 2026-10-21 | ADM-C1180 |  | 186d |  |
|  | MPB | **Main Process Building** |  | 2026-01-24 | 2027-05-31 |  |  |  |  |
|  | MPB.E | **Engineering** |  | 2026-01-30 | 2026-07-15 |  |  |  |  |
| MPB-E1010 |  | Design basis & architectural layout | 32d | 2026-01-30 A | 2026-03-20 A | MS-1000 FS+10d | 100% |  |  |
| MPB-E1020 |  | Structural design & IFC drawings | 52d | 2026-02-11 A | 2026-05-04 A | MPB-E1010 SS+5d | 100% |  |  |
| MPB-E1030 |  | MEP design & drawings | 67d | 2026-03-30 A | 2026-07-15 A | MPB-E1010 | 100% |  |  |
| MPB-E1040 |  | Drawing approval by client | 21d | 2026-05-22 A | 2026-07-15 A | MPB-E1020, MPB-E1030 FF | 100% |  |  |
|  | MPB.P | **Procurement** |  | 2026-05-11 | 2027-02-03 |  |  |  |  |
| MPB-P1050 |  | Structural steel - PO placement | 22d | 2026-05-11 A | 2026-06-09 A | MPB-E1020 | 100% |  |  |
| MPB-P1060 |  | Structural steel - fabrication & supply to site | 99d | 2026-06-15 A | 2026-10-24 | MPB-P1050 | 55% | 33d |  |
| MPB-P1070 |  | MEP equipment - PO placement | 22d | 2026-07-20 A | 2026-08-13 A | MPB-E1030 | 100% |  |  |
| MPB-P1080 |  | MEP equipment - manufacturing & delivery | 124d | 2026-08-18 A | 2027-02-03 | MPB-P1070 |  | 0d |  |
|  | MPB.C | **Construction** |  | 2026-01-24 | 2027-05-31 |  |  |  |  |
| MPB-C1090 |  | Site mobilisation & survey | 10d | 2026-01-24 A | 2026-02-06 A | MS-1000 FS+10d | 100% |  |  |
| MPB-C1100 |  | Excavation | 32d | 2026-02-28 A | 2026-04-09 A | MPB-C1090, MPB-E1020 SS+10d | 100% |  |  |
| MPB-C1110 |  | PCC & foundation concreting | 45d | 2026-03-18 A | 2026-05-12 A | MPB-C1100 SS+7d | 100% |  |  |
| MPB-C1120 |  | Plinth beam & backfilling | 28d | 2026-05-22 A | 2026-06-26 A | MPB-C1110 | 100% |  |  |
| MPB-C1130 |  | Superstructure - RCC / steel erection | 102d | 2026-07-08 A | 2026-12-15 | MPB-C1120, MPB-P1060 SS+15d | 32% | 48d |  |
| MPB-C1150 |  | Masonry & plastering | 69d | 2026-08-06 A | 2026-10-29 | MPB-C1130 SS+20d | 29% | 119d |  |
| MPB-C1140 |  | Roofing & cladding | 39d | 2026-12-10 | 2027-01-25 | MPB-C1130 FS-5d |  | 48d |  |
| MPB-C1170 |  | Finishes - flooring & painting | 58d | 2027-01-27 | 2027-04-05 | MPB-C1150, MPB-C1140 |  | 48d |  |
| MPB-C1160 |  | MEP installation | 78d | 2027-02-04 | 2027-05-06 | MPB-C1150 SS+10d, MPB-P1080 |  | 0d |  |
| MPB-C1180 |  | Testing & commissioning | 21d | 2027-05-07 | 2027-05-31 | MPB-C1160, MPB-C1170 FF |  | 0d |  |
| MPB-C1190 |  | Building handover to client | 0d | 2027-05-31 | 2027-05-31 | MPB-C1180 |  | 0d |  |
|  | WHS | **Warehouse Block** |  | 2026-02-27 | 2027-02-05 |  |  |  |  |
|  | WHS.E | **Engineering** |  | 2026-03-06 | 2026-06-11 |  |  |  |  |
| WHS-E1010 |  | Design basis & architectural layout | 21d | 2026-03-06 A | 2026-04-08 A | MS-1000 FS+40d | 100% |  |  |
| WHS-E1020 |  | Structural design & IFC drawings | 30d | 2026-03-18 A | 2026-05-06 A | WHS-E1010 SS+5d | 100% |  |  |
| WHS-E1030 |  | MEP design & drawings | 42d | 2026-04-15 A | 2026-06-11 A | WHS-E1010 | 100% |  |  |
| WHS-E1040 |  | Drawing approval by client | 14d | 2026-05-15 A | 2026-06-11 A | WHS-E1020, WHS-E1030 FF | 100% |  |  |
|  | WHS.P | **Procurement** |  | 2026-05-07 | 2026-10-30 |  |  |  |  |
| WHS-P1050 |  | Structural steel - PO placement | 13d | 2026-05-07 A | 2026-05-21 A | WHS-E1020 | 100% |  |  |
| WHS-P1060 |  | Structural steel - fabrication & supply to site | 58d | 2026-05-28 A | 2026-08-05 A | WHS-P1050 | 100% |  |  |
| WHS-P1070 |  | MEP equipment - PO placement | 18d | 2026-06-13 A | 2026-07-08 A | WHS-E1030 | 100% |  |  |
| WHS-P1080 |  | MEP equipment - manufacturing & delivery | 83d | 2026-07-09 A | 2026-10-30 | WHS-P1070 | 40% | 97d |  |
|  | WHS.C | **Construction** |  | 2026-02-27 | 2027-02-05 |  |  |  |  |
| WHS-C1090 |  | Site mobilisation & survey | 8d | 2026-02-27 A | 2026-03-09 A | MS-1000 FS+40d | 100% |  |  |
| WHS-C1100 |  | Excavation | 19d | 2026-03-30 A | 2026-04-24 A | WHS-C1090, WHS-E1020 SS+10d | 100% |  |  |
| WHS-C1110 |  | PCC & foundation concreting | 37d | 2026-04-13 A | 2026-05-25 A | WHS-C1100 SS+7d | 100% |  |  |
| WHS-C1120 |  | Plinth beam & backfilling | 20d | 2026-05-28 A | 2026-06-22 A | WHS-C1110 | 100% |  |  |
| WHS-C1130 |  | Superstructure - RCC / steel erection | 66d | 2026-06-24 A | 2026-09-10 | WHS-C1120, WHS-P1060 SS+15d | 89% | 117d |  |
| WHS-C1150 |  | Masonry & plastering | 41d | 2026-07-23 A | 2026-09-22 | WHS-C1130 SS+20d | 57% | 137d |  |
| WHS-C1140 |  | Roofing & cladding | 32d | 2026-09-05 | 2026-10-13 | WHS-C1130 FS-5d |  | 150d |  |
| WHS-C1170 |  | Finishes - flooring & painting | 42d | 2026-10-14 | 2026-12-03 | WHS-C1150, WHS-C1140 |  | 150d |  |
| WHS-C1160 |  | MEP installation | 63d | 2026-10-31 | 2027-01-14 | WHS-C1150 SS+10d, WHS-P1080 |  | 97d |  |

| ID | WBS | Task | Duration | Start | Finish | Predecessors | Complete | Total float |
| --- | --- | --- | --- | --- | --- | --- | --- | --- |
| WHS-C1180 |  | Testing & commissioning | 18d | 2027-01-15 | 2027-02-05 | WHS-C1160, WHS-C1170 FF |  | 97d |
| WHS-C1190 |  | Building handover to client | 0d | 2027-02-05 | 2027-02-05 | WHS-C1180 |  | 97d |
|  | SUB | **33kV Substation** |  | 2026-03-27 | 2027-01-14 |  |  |  |
|  | SUB.E | **Engineering** |  | 2026-04-10 | 2026-07-07 |  |  |  |
| SUB-E1010 |  | Design basis & architectural layout | 20d | 2026-04-10 A | 2026-05-13 A | MS-1000 FS+60d | 100% |  |
| SUB-E1020 |  | Structural design & IFC drawings | 26d | 2026-04-27 A | 2026-06-01 A | SUB-E1010 SS+5d | 100% |  |
| SUB-E1030 |  | MEP design & drawings | 35d | 2026-05-22 A | 2026-07-07 A | SUB-E1010 | 100% |  |
| SUB-E1040 |  | Drawing approval by client | 12d | 2026-06-12 A | 2026-07-07 A | SUB-E1020, SUB-E1030 FF | 100% |  |
|  | SUB.P | **Procurement** |  | 2026-06-10 | 2026-10-31 |  |  |  |
| SUB-P1050 |  | Structural steel - PO placement | 12d | 2026-06-10 A | 2026-06-23 A | SUB-E1020 | 100% |  |
| SUB-P1060 |  | Structural steel - fabrication & supply to site | 59d | 2026-07-01 A | 2026-09-17 | SUB-P1050 | 75% | 110d |
| SUB-P1070 |  | MEP equipment - PO placement | 15d | 2026-07-14 A | 2026-07-29 A | SUB-E1030 | 100% |  |
| SUB-P1080 |  | MEP equipment - manufacturing & delivery | 62d | 2026-08-07 A | 2026-10-31 | SUB-P1070 | 18% | 115d |
|  | SUB.C | **Construction** |  | 2026-03-27 | 2027-01-14 |  |  |  |
| SUB-C1090 |  | Site mobilisation & survey | 5d | 2026-03-27 A | 2026-04-01 A | MS-1000 FS+60d | 100% |  |
| SUB-C1100 |  | Excavation | 18d | 2026-05-15 A | 2026-06-09 A | SUB-C1090, SUB-E1020 SS+10d | 100% |  |
| SUB-C1110 |  | PCC & foundation concreting | 29d | 2026-06-03 A | 2026-07-09 A | SUB-C1100 SS+7d | 100% |  |
| SUB-C1120 |  | Plinth beam & backfilling | 17d | 2026-07-21 A | 2026-08-08 A | SUB-C1110 | 100% |  |
| SUB-C1130 |  | Superstructure - RCC / steel erection | 53d | 2026-08-19 A | 2026-10-24 | SUB-C1120, SUB-P1060 SS+15d | 21% | 125d |
| SUB-C1150 |  | Masonry & plastering | 32d | 2026-09-11 | 2026-10-19 | SUB-C1130 SS+20d |  | 147d |
| SUB-C1140 |  | Roofing & cladding | 23d | 2026-10-19 | 2026-11-16 | SUB-C1130 FS-5d |  | 125d |
| SUB-C1160 |  | MEP installation | 48d | 2026-11-02 | 2026-12-29 | SUB-C1150 SS+10d, SUB-P1080 |  | 115d |
| SUB-C1170 |  | Finishes - flooring & painting | 40d | 2026-11-17 | 2027-01-02 | SUB-C1150, SUB-C1140 |  | 125d |
| SUB-C1180 |  | Testing & commissioning | 14d | 2026-12-30 | 2027-01-14 | SUB-C1160, SUB-C1170 FF |  | 115d |
| SUB-C1190 |  | Building handover to client | 0d | 2027-01-14 | 2027-01-14 | SUB-C1180 |  | 115d |
|  | UTL | **Utility Building** |  | 2026-04-25 | 2027-04-03 |  |  |  |
|  | UTL.E | **Engineering** |  | 2026-05-14 | 2026-08-12 |  |  |  |
| UTL-E1010 |  | Design basis & architectural layout | 24d | 2026-05-14 A | 2026-06-15 A | MS-1000 FS+90d | 100% |  |
| UTL-E1020 |  | Structural design & IFC drawings | 35d | 2026-05-22 A | 2026-07-16 A | UTL-E1010 SS+5d | 100% |  |
| UTL-E1030 |  | MEP design & drawings | 38d | 2026-06-24 A | 2026-08-12 A | UTL-E1010 | 100% |  |
| UTL-E1040 |  | Drawing approval by client | 13d | 2026-07-28 A | 2026-08-12 A | UTL-E1020, UTL-E1030 FF | 100% |  |
|  | UTL.P | **Procurement** |  | 2026-07-17 | 2027-01-05 |  |  |  |
| UTL-P1050 |  | Structural steel - PO placement | 14d | 2026-07-17 A | 2026-08-03 A | UTL-E1020 | 100% |  |
| UTL-P1060 |  | Structural steel - fabrication & supply to site | 61d | 2026-08-04 A | 2026-11-04 | UTL-P1050 | 11% | 84d |
| UTL-P1070 |  | MEP equipment - PO placement | 17d | 2026-08-20 A | 2026-09-14 | UTL-E1030 | 29% | 49d |
| UTL-P1080 |  | MEP equipment - manufacturing & delivery | 93d | 2026-09-15 | 2027-01-05 | UTL-P1070 |  | 49d |
|  | UTL.C | **Construction** |  | 2026-04-25 | 2027-04-03 |  |  |  |
| UTL-C1090 |  | Site mobilisation & survey | 7d | 2026-04-25 A | 2026-05-02 A | MS-1000 FS+90d | 100% |  |
| UTL-C1100 |  | Excavation | 24d | 2026-06-04 A | 2026-07-01 A | UTL-C1090, UTL-E1020 SS+10d | 100% |  |
| UTL-C1110 |  | PCC & foundation concreting | 30d | 2026-06-16 A | 2026-07-27 A | UTL-C1100 SS+7d | 100% |  |
| UTL-C1120 |  | Plinth beam & backfilling | 21d | 2026-08-03 A | 2026-08-27 A | UTL-C1110 | 100% |  |
| UTL-C1130 |  | Superstructure - RCC / steel erection | 69d | 2026-09-01 | 2026-11-23 | UTL-C1120, UTL-P1060 SS+15d |  | 99d |
| UTL-C1150 |  | Masonry & plastering | 47d | 2026-09-24 | 2026-11-20 | UTL-C1130 SS+20d |  | 124d |
| UTL-C1140 |  | Roofing & cladding | 29d | 2026-11-18 | 2026-12-21 | UTL-C1130 FS-5d |  | 99d |
| UTL-C1170 |  | Finishes - flooring & painting | 36d | 2026-12-22 | 2027-02-03 | UTL-C1150, UTL-C1140 |  | 99d |
| UTL-C1160 |  | MEP installation | 59d | 2027-01-06 | 2027-03-16 | UTL-C1150 SS+10d, UTL-P1080 |  | 49d |
| UTL-C1180 |  | Testing & commissioning | 15d | 2027-03-17 | 2027-04-03 | UTL-C1160, UTL-C1170 FF |  | 49d |
| UTL-C1190 |  | Building handover to client | 0d | 2027-04-03 | 2027-04-03 | UTL-C1180 |  | 49d |
|  | STP | **STP & Pump House** |  | 2026-05-29 | 2027-02-02 |  |  |  |
|  | STP.E | **Engineering** |  | 2026-07-02 | 2026-09-08 |  |  |  |
| STP-E1010 |  | Design basis & architectural layout | 14d | 2026-07-02 A | 2026-07-23 A | MS-1000 FS+120d | 100% |  |
| STP-E1020 |  | Structural design & IFC drawings | 21d | 2026-07-10 A | 2026-08-11 A | STP-E1010 SS+5d | 100% |  |
| STP-E1030 |  | MEP design & drawings | 29d | 2026-07-29 A | 2026-09-08 | STP-E1010 | 79% | 83d |
| STP-E1040 |  | Drawing approval by client | 9d | 2026-08-12 A | 2026-09-08 | STP-E1020, STP-E1030 FF | 89% | 183d |
|  | STP.P | **Procurement** |  | 2026-08-14 | 2026-11-28 |  |  |  |
| STP-P1050 |  | Structural steel - PO placement | 9d | 2026-08-14 A | 2026-08-25 A | STP-E1020 | 100% |  |
| STP-P1060 |  | Structural steel - fabrication & supply to site | 40d | 2026-08-29 A | 2026-10-21 | STP-P1050 |  | 125d |
| STP-P1070 |  | MEP equipment - PO placement | 11d | 2026-09-09 | 2026-09-21 | STP-E1030 |  | 100d |
| STP-P1080 |  | MEP equipment - manufacturing & delivery | 56d | 2026-09-22 | 2026-11-28 | STP-P1070 |  | 100d |
|  | STP.C | **Construction** |  | 2026-05-29 | 2027-02-02 |  |  |  |
| STP-C1090 |  | Site mobilisation & survey | 5d | 2026-05-29 A | 2026-06-03 A | MS-1000 FS+120d | 100% |  |
| STP-C1100 |  | Excavation | 15d | 2026-07-24 A | 2026-08-10 A | STP-C1090, STP-E1020 SS+10d | 100% |  |
| STP-C1110 |  | PCC & foundation concreting | 28d | 2026-08-06 A | 2026-09-17 | STP-C1100 SS+7d | 58% | 110d |
| STP-C1150 |  | Masonry & plastering | 33d | 2026-08-26 A | 2026-12-07 | STP-C1130 SS+20d | 5% | 114d |
| STP-C1160 |  | MEP installation | 43d | 2026-08-26 A | 2027-01-16 | STP-C1150 SS+10d, STP-P1080 | 5% | 100d |
| STP-C1120 |  | Plinth beam & backfilling | 15d | 2026-09-18 | 2026-10-06 | STP-C1110 |  | 110d |
| STP-C1130 |  | Superstructure - RCC / steel erection | 43d | 2026-10-07 | 2026-11-27 | STP-C1120, STP-P1060 SS+15d |  | 110d |
| STP-C1140 |  | Roofing & cladding | 20d | 2026-11-23 | 2026-12-15 | STP-C1130 FS-5d |  | 110d |
| STP-C1170 |  | Finishes - flooring & painting | 30d | 2026-12-16 | 2027-01-20 | STP-C1150, STP-C1140 |  | 110d |
| STP-C1180 |  | Testing & commissioning | 13d | 2027-01-18 | 2027-02-02 | STP-C1160, STP-C1170 FF |  | 100d |

| ID | Task | Duration | Start | Finish | Predecessors | Total float |
| --- | --- | --- | --- | --- | --- | --- |
| STP-C1190 | Building handover to client | 0d | 2027-02-02 | 2027-02-02 | STP-C1180 | 100d |

## Version 2 (data date 2026-09-01, saved 2026-09-28)

Note of the change: Schedule Engine: Area → Building dimension from WBS (Pellet-1/2, Filtration)

Last finish 2027-05-31 → 2027-06-03 (+3d). Complete tasks 61 → 96.

Added:

| ID | Task | Duration | Start | Finish | Predecessors |
| --- | --- | --- | --- | --- | --- |
| PP1.ASS | **Additive Storage Shed** |  | 2026-01-07 | 2026-08-19 |  |
| PP1.AGB | **Additive Grinding Building** |  | 2026-01-20 | 2027-02-22 |  |
| PP1.GPB | **Green Pelletizing Building** |  | 2026-01-29 | 2027-06-03 |  |
| PP1.IFB | **Induration Furnace Building** |  | 2026-03-02 | 2027-04-23 |  |
| PP2 | **Pellet Plant-2** |  | 2026-03-18 | 2027-05-20 |  |
| PP2.ASS | **Additive Storage Shed** |  | 2026-03-18 | 2026-12-02 |  |
| PP2.GPB | **Green Pelletizing Building** |  | 2026-04-17 | 2027-05-20 |  |
| PP2.SCH | **Screen House** |  | 2026-05-11 | 2027-03-20 |  |
| PP2.SCH.E | **Engineering** |  | 2026-06-01 | 2026-09-02 |  |
| PP2-SCH-E1010 | Design basis & architectural layout | 21d | 2026-06-01 A | 2026-06-26 A | MS-1000 FS+100d |
| PP2-SCH-E1020 | Structural design & IFC drawings | 35d | 2026-06-08 A | 2026-07-28 A | PP2-SCH-E1010 SS+5d |
| PP2-SCH-E1030 | MEP design & drawings | 40d | 2026-06-30 A | 2026-09-02 | PP2-SCH-E1010 |
| PP2-SCH-E1040 | Drawing approval by client | 15d | 2026-07-31 A | 2026-09-02 | PP2-SCH-E1020, PP2-SCH-E1030 FF |
| PP2.SCH.P | **Procurement** |  | 2026-08-01 | 2026-12-26 |  |
| PP2-SCH-P1050 | Structural steel - PO placement | 15d | 2026-08-01 A | 2026-08-22 A | PP2-SCH-E1020 |
| PP2-SCH-P1060 | Structural steel - fabrication & supply to site | 67d | 2026-08-28 A | 2026-12-04 | PP2-SCH-P1050 |
| PP2-SCH-P1070 | MEP equipment - PO placement | 18d | 2026-09-03 | 2026-09-23 | PP2-SCH-E1030 |
| PP2-SCH-P1080 | MEP equipment - manufacturing & delivery | 77d | 2026-09-24 | 2026-12-26 | PP2-SCH-P1070 |
| PP2.SCH.C | **Construction** |  | 2026-05-11 | 2027-03-20 |  |
| PP2-SCH-C1090 | Site mobilisation & survey | 7d | 2026-05-11 A | 2026-05-20 A | MS-1000 FS+100d |
| PP2-SCH-C1100 | Excavation | 20d | 2026-06-19 A | 2026-07-11 A | PP2-SCH-C1090, PP2-SCH-E1020 SS+10d |
| PP2-SCH-C1110 | PCC & foundation concreting | 30d | 2026-07-01 A | 2026-08-11 A | PP2-SCH-C1100 SS+7d |
| PP2-SCH-C1120 | Plinth beam & backfilling | 21d | 2026-08-13 A | 2026-09-10 | PP2-SCH-C1110 |
| PP2-SCH-C1130 | Superstructure - RCC / steel erection | 52d | 2026-09-15 | 2026-11-17 | PP2-SCH-C1120, PP2-SCH-P1060 SS+15d |
| PP2-SCH-C1150 | Masonry & plastering | 39d | 2026-10-09 | 2026-11-25 | PP2-SCH-C1130 SS+20d |
| PP2-SCH-C1140 | Roofing & cladding | 27d | 2026-11-12 | 2026-12-12 | PP2-SCH-C1130 FS-5d |
| PP2-SCH-C1170 | Finishes - flooring & painting | 43d | 2026-12-14 | 2027-02-03 | PP2-SCH-C1150, PP2-SCH-C1140 |
| PP2-SCH-C1160 | MEP installation | 55d | 2026-12-28 | 2027-03-02 | PP2-SCH-C1150 SS+10d, PP2-SCH-P1080 |
| PP2-SCH-C1180 | Testing & commissioning | 16d | 2027-03-03 | 2027-03-20 | PP2-SCH-C1160, PP2-SCH-C1170 FF |
| PP2-SCH-C1190 | Building handover to client | 0d | 2027-03-20 | 2027-03-20 | PP2-SCH-C1180 |
| FLT | **Filtration Plant** |  | 2026-02-16 | 2027-03-01 |  |
| FLT.FLB | **Filtration Building** |  | 2026-02-16 | 2027-03-01 |  |
| FLT.FLB.E | **Engineering** |  | 2026-02-17 | 2026-06-11 |  |
| FLT-FLB-E1010 | Design basis & architectural layout | 24d | 2026-02-17 A | 2026-03-20 A | MS-1000 FS+30d |
| FLT-FLB-E1020 | Structural design & IFC drawings | 39d | 2026-02-24 A | 2026-04-30 A | FLT-FLB-E1010 SS+5d |
| FLT-FLB-E1030 | MEP design & drawings | 53d | 2026-03-27 A | 2026-06-04 A | FLT-FLB-E1010 |
| FLT-FLB-E1040 | Drawing approval by client | 16d | 2026-05-18 A | 2026-06-11 A | FLT-FLB-E1020, FLT-FLB-E1030 FF |
| FLT.FLB.P | **Procurement** |  | 2026-05-05 | 2026-11-16 |  |
| FLT-FLB-P1050 | Structural steel - PO placement | 18d | 2026-05-05 A | 2026-05-26 A | FLT-FLB-E1020 |
| FLT-FLB-P1060 | Structural steel - fabrication & supply to site | 66d | 2026-05-27 A | 2026-08-20 A | FLT-FLB-P1050 |
| FLT-FLB-P1070 | MEP equipment - PO placement | 20d | 2026-06-06 A | 2026-06-27 A | FLT-FLB-E1030 |
| FLT-FLB-P1080 | MEP equipment - manufacturing & delivery | 89d | 2026-07-04 A | 2026-11-16 | FLT-FLB-P1070 |
| FLT.FLB.C | **Construction** |  | 2026-02-16 | 2027-03-01 |  |
| FLT-FLB-C1090 | Site mobilisation & survey | 8d | 2026-02-16 A | 2026-02-26 A | MS-1000 FS+30d |
| FLT-FLB-C1100 | Excavation | 25d | 2026-03-10 A | 2026-04-14 A | FLT-FLB-C1090, FLT-FLB-E1020 SS+10d |
| FLT-FLB-C1110 | PCC & foundation concreting | 39d | 2026-03-23 A | 2026-05-14 A | FLT-FLB-C1100 SS+7d |
| FLT-FLB-C1120 | Plinth beam & backfilling | 26d | 2026-05-20 A | 2026-06-22 A | FLT-FLB-C1110 |
| FLT-FLB-C1130 | Superstructure - RCC / steel erection | 67d | 2026-06-25 A | 2026-10-01 | FLT-FLB-C1120, FLT-FLB-P1060 SS+15d |
| FLT-FLB-C1150 | Masonry & plastering | 46d | 2026-07-22 A | 2026-09-18 | FLT-FLB-C1130 SS+20d |
| FLT-FLB-C1160 | MEP installation | 69d | 2026-08-26 A | 2027-02-04 | FLT-FLB-C1150 SS+10d, FLT-FLB-P1080 |
| FLT-FLB-C1140 | Roofing & cladding | 34d | 2026-09-26 | 2026-11-06 | FLT-FLB-C1130 FS-5d |
| FLT-FLB-C1170 | Finishes - flooring & painting | 50d | 2026-11-07 | 2027-01-06 | FLT-FLB-C1150, FLT-FLB-C1140 |
| FLT-FLB-C1180 | Testing & commissioning | 21d | 2027-02-05 | 2027-03-01 | FLT-FLB-C1160, FLT-FLB-C1170 FF |
| FLT-FLB-C1190 | Building handover to client | 0d | 2027-03-01 | 2027-03-01 | FLT-FLB-C1180 |
| FLT.RFB | **Return Fines Building** |  | 2026-04-04 | 2027-01-20 |  |
| FLT.RFB.E | **Engineering** |  | 2026-04-16 | 2026-07-10 |  |
| FLT-RFB-E1010 | Design basis & architectural layout | 19d | 2026-04-16 A | 2026-05-13 A | MS-1000 FS+70d |
| FLT-RFB-E1020 | Structural design & IFC drawings | 34d | 2026-04-23 A | 2026-06-10 A | FLT-RFB-E1010 SS+5d |
| FLT-RFB-E1030 | MEP design & drawings | 36d | 2026-05-19 A | 2026-07-10 A | FLT-RFB-E1010 |
| FLT-RFB-E1040 | Drawing approval by client | 11d | 2026-06-22 A | 2026-07-10 A | FLT-RFB-E1020, FLT-RFB-E1030 FF |
| FLT.RFB.P | **Procurement** |  | 2026-06-12 | 2026-11-02 |  |
| FLT-RFB-P1050 | Structural steel - PO placement | 11d | 2026-06-12 A | 2026-06-24 A | FLT-RFB-E1020 |
| FLT-RFB-P1060 | Structural steel - fabrication & supply to site | 60d | 2026-06-30 A | 2026-10-03 | FLT-RFB-P1050 |
| FLT-RFB-P1070 | MEP equipment - PO placement | 12d | 2026-07-11 A | 2026-07-24 A | FLT-RFB-E1030 |
| FLT-RFB-P1080 | MEP equipment - manufacturing & delivery | 62d | 2026-07-29 A | 2026-11-02 | FLT-RFB-P1070 |
| FLT.RFB.C | **Construction** |  | 2026-04-04 | 2027-01-20 |  |
| FLT-RFB-C1090 | Site mobilisation & survey | 7d | 2026-04-04 A | 2026-04-11 A | MS-1000 FS+70d |
| FLT-RFB-C1100 | Excavation | 17d | 2026-05-05 A | 2026-05-27 A | FLT-RFB-C1090, FLT-RFB-E1020 SS+10d |
| FLT-RFB-C1110 | PCC & foundation concreting | 27d | 2026-05-14 A | 2026-06-13 A | FLT-RFB-C1100 SS+7d |
| FLT-RFB-C1120 | Plinth beam & backfilling | 20d | 2026-06-17 A | 2026-07-08 A | FLT-RFB-C1110 |
| FLT-RFB-C1130 | Superstructure - RCC / steel erection | 58d | 2026-07-22 A | 2026-10-10 | FLT-RFB-C1120, FLT-RFB-P1060 SS+15d |
| FLT-RFB-C1150 | Masonry & plastering | 34d | 2026-08-14 A | 2026-09-29 | FLT-RFB-C1130 SS+20d |
| FLT-RFB-C1140 | Roofing & cladding | 23d | 2026-10-06 | 2026-11-02 | FLT-RFB-C1130 FS-5d |
| FLT-RFB-C1160 | MEP installation | 53d | 2026-11-03 | 2027-01-05 | FLT-RFB-C1150 SS+10d, FLT-RFB-P1080 |
| FLT-RFB-C1170 | Finishes - flooring & painting | 32d | 2026-11-03 | 2026-12-10 | FLT-RFB-C1150, FLT-RFB-C1140 |
| FLT-RFB-C1180 | Testing & commissioning | 13d | 2027-01-06 | 2027-01-20 | FLT-RFB-C1160, FLT-RFB-C1170 FF |
| FLT-RFB-C1190 | Building handover to client | 0d | 2027-01-20 | 2027-01-20 | FLT-RFB-C1180 |

Removed: Main Process Building; Warehouse Block; 33kV Substation; Utility Building; STP & Pump House

Changed:

| ID | Task | Start | Finish | Duration | Complete | Total float | Predecessors | Other |
| --- | --- | --- | --- | --- | --- | --- | --- | --- |
| GEN | **Project Milestones** |  | 2027-05-31 → 2027-06-03 (+3d) |  |  |  |  |  |
| MS-9000 | Pellet plant complex - mechanical completion | 2027-05-31 → 2027-06-03 (+3d) | 2027-05-31 → 2027-06-03 (+3d) |  |  |  | PP1-ASS-C1190, PP1-AGB-C1190, PP1-GPB-C1190, PP1-IFB-C1190, PP2-ASS-C1190, PP2-GPB-C1190 → PP1-ASS-C1190, PP1-AGB-C1190, PP1-GPB-C1190, PP1-IFB-C1190, PP2-ASS-C1190, PP2-GPB-C1190, PP2-SCH-C1190, FLT-FLB-C1190, FLT-RFB-C1190 | was named Plant mechanical completion |
| PP1 | **Pellet Plant-1** | 2026-01-08 → 2026-01-07 (-1d) | 2026-10-21 → 2027-06-03 (+225d) |  |  |  |  | was named Admin Building |
| PP1.ASS.E | **Engineering** | 2026-01-08 → 2026-01-07 (-1d) | 2026-04-14 → 2026-03-26 (-19d) |  |  |  |  |  |
| PP1-ASS-E1010 | Design basis & architectural layout | 2026-01-08 A → 2026-01-07 A (-1d) | 2026-02-10 A → 2026-02-03 A (-7d) | 19d → 16d |  |  |  |  |
| PP1-ASS-E1020 | Structural design & IFC drawings |  | 2026-03-20 A → 2026-03-06 A (-14d) | 34d → 28d |  |  |  |  |
| PP1-ASS-E1030 | MEP design & drawings | 2026-02-17 A → 2026-02-09 A (-8d) | 2026-04-14 A → 2026-03-26 A (-19d) | 36d → 30d |  |  |  |  |
| PP1-ASS-E1040 | Drawing approval by client | 2026-03-24 A → 2026-03-09 A (-15d) | 2026-04-14 A → 2026-03-26 A (-19d) | 10d → 9d |  |  |  |  |
| PP1.ASS.P | **Procurement** | 2026-03-25 → 2026-03-09 (-16d) | 2026-07-31 → 2026-06-11 (-50d) |  |  |  |  |  |
| PP1-ASS-P1050 | Structural steel - PO placement | 2026-03-25 A → 2026-03-09 A (-16d) | 2026-04-07 A → 2026-03-18 A (-20d) | 11d → 9d |  |  |  |  |
| PP1-ASS-P1060 | Structural steel - fabrication & supply to site | 2026-04-13 A → 2026-03-23 A (-21d) | 2026-07-01 A → 2026-05-18 A (-44d) | 58d → 48d |  |  |  |  |
| PP1-ASS-P1070 | MEP equipment - PO placement | 2026-04-15 A → 2026-03-28 A (-18d) | 2026-04-28 A → 2026-04-10 A (-18d) | 13d → 11d |  |  |  |  |
| PP1-ASS-P1080 | MEP equipment - manufacturing & delivery | 2026-05-04 A → 2026-04-11 A (-23d) | 2026-07-31 A → 2026-06-11 A (-50d) | 70d → 58d |  |  |  |  |
| PP1.ASS.C | **Construction** | 2026-01-08 → 2026-01-09 (+1d) | 2026-10-21 → 2026-08-19 (-63d) |  |  |  |  |  |
| PP1-ASS-C1090 | Site mobilisation & survey | 2026-01-08 A → 2026-01-09 A (+1d) |  | 5d → 4d |  |  |  |  |
| PP1-ASS-C1100 | Excavation | 2026-02-04 A → 2026-02-03 A (-1d) | 2026-02-26 A → 2026-02-18 A (-8d) | 17d → 14d |  |  |  |  |
| PP1-ASS-C1110 | PCC & foundation concreting | 2026-02-14 A → 2026-02-12 A (-2d) | 2026-03-26 A → 2026-03-19 A (-7d) | 30d → 25d |  |  |  |  |
| PP1-ASS-C1120 | Plinth beam & backfilling | 2026-03-28 A → 2026-03-25 A (-3d) | 2026-04-23 A → 2026-04-13 A (-10d) | 20d → 17d |  |  |  |  |
| PP1-ASS-C1130 | Superstructure - RCC / steel erection | 2026-05-01 A → 2026-04-16 A (-15d) | 2026-07-13 A → 2026-06-12 A (-31d) | 54d → 45d |  |  |  |  |
| PP1-ASS-C1150 | Masonry & plastering | 2026-05-29 A → 2026-05-12 A (-17d) | 2026-07-11 A → 2026-06-12 A (-29d) | 37d → 30d |  |  |  |  |
| PP1-ASS-C1140 | Roofing & cladding | 2026-07-13 A → 2026-06-12 A (-31d) | 2026-08-03 A → 2026-07-06 A (-28d) | 21d → 18d |  |  |  |  |
| PP1-ASS-C1160 | MEP installation | 2026-08-04 A → 2026-06-17 A (-48d) | 2026-10-03 → 2026-07-29 A (-66d) | 48d → 40d | 42% → 100% | 186d → none |  |  |
| PP1-ASS-C1170 | Finishes - flooring & painting | 2026-08-05 A → 2026-07-09 A (-27d) | 2026-09-28 → 2026-08-14 A (-45d) | 40d → 33d | 53% → 100% | 204d → none |  |  |
| PP1-ASS-C1180 | Testing & commissioning | 2026-10-05 → 2026-08-04 A (-62d) | 2026-10-21 → 2026-08-17 A (-65d) | 14d → 11d | 0% → 100% | 186d → none |  |  |
| PP1-ASS-C1190 | Building handover to client | 2026-10-21 → 2026-08-19 A (-63d) | 2026-10-21 → 2026-08-19 A (-63d) |  | 0% → 100% | 186d → none |  |  |
| PP1.AGB.E | **Engineering** | 2026-01-30 → 2026-01-27 (-3d) | 2026-07-15 → 2026-05-21 (-55d) |  |  |  |  |  |
| PP1-AGB-E1010 | Design basis & architectural layout | 2026-01-30 A → 2026-01-27 A (-3d) | 2026-03-20 A → 2026-03-03 A (-17d) | 32d → 26d |  |  |  |  |
| PP1-AGB-E1020 | Structural design & IFC drawings | 2026-02-11 A → 2026-02-12 A (+1d) | 2026-05-04 A → 2026-04-15 A (-19d) | 52d → 42d |  |  |  |  |
| PP1-AGB-E1030 | MEP design & drawings | 2026-03-30 A → 2026-03-11 A (-19d) | 2026-07-15 A → 2026-05-21 A (-55d) | 67d → 54d |  |  |  |  |
| PP1-AGB-E1040 | Drawing approval by client | 2026-05-22 A → 2026-04-24 A (-28d) | 2026-07-15 A → 2026-05-21 A (-55d) | 21d → 16d |  |  |  |  |
| PP1.AGB.P | **Procurement** | 2026-05-11 → 2026-04-21 (-20d) | 2027-02-03 → 2026-11-18 (-77d) |  |  |  |  |  |
| PP1-AGB-P1050 | Structural steel - PO placement | 2026-05-11 A → 2026-04-21 A (-20d) | 2026-06-09 A → 2026-05-13 A (-27d) | 22d → 18d |  |  |  |  |
| PP1-AGB-P1060 | Structural steel - fabrication & supply to site | 2026-06-15 A → 2026-05-19 A (-27d) | 2026-10-24 → 2026-08-27 A (-58d) | 99d → 79d | 55% → 100% | 33d → none |  |  |
| PP1-AGB-P1070 | MEP equipment - PO placement | 2026-07-20 A → 2026-05-29 A (-52d) | 2026-08-13 A → 2026-06-18 A (-56d) | 22d → 18d |  |  |  |  |
| PP1-AGB-P1080 | MEP equipment - manufacturing & delivery | 2026-08-18 A → 2026-06-22 A (-57d) | 2027-02-03 → 2026-11-18 (-77d) | 124d → 99d | 0% → 34% | 0d → 86d |  |  |
| PP1.AGB.C | **Construction** | 2026-01-24 → 2026-01-20 (-4d) | 2027-05-31 → 2027-02-22 (-98d) |  |  |  |  |  |
| PP1-AGB-C1090 | Site mobilisation & survey | 2026-01-24 A → 2026-01-20 A (-4d) | 2026-02-06 A → 2026-01-31 A (-6d) | 10d → 8d |  |  |  |  |
| PP1-AGB-C1100 | Excavation | 2026-02-28 A → 2026-03-06 A (+6d) | 2026-04-09 A → 2026-04-06 A (-3d) | 32d → 25d |  |  |  |  |
| PP1-AGB-C1110 | PCC & foundation concreting | 2026-03-18 A → 2026-03-20 A (+2d) | 2026-05-12 A → 2026-05-06 A (-6d) | 45d → 36d |  |  |  |  |
| PP1-AGB-C1120 | Plinth beam & backfilling | 2026-05-22 A → 2026-05-11 A (-11d) | 2026-06-26 A → 2026-06-03 A (-23d) | 28d → 22d |  |  |  |  |
| PP1-AGB-C1130 | Superstructure - RCC / steel erection | 2026-07-08 A → 2026-06-13 A (-25d) | 2026-12-15 → 2026-10-03 (-73d) | 102d → 82d | 32% → 68% | 48d → 121d |  |  |
| PP1-AGB-C1150 | Masonry & plastering | 2026-08-06 A → 2026-07-11 A (-26d) | 2026-10-29 → 2026-09-24 (-35d) | 69d → 55d | 29% → 64% | 119d → 141d |  |  |
| PP1-AGB-C1140 | Roofing & cladding | 2026-12-10 → 2026-09-28 (-73d) | 2027-01-25 → 2026-11-04 (-82d) | 39d → 31d |  | 48d → 131d |  |  |
| PP1-AGB-C1170 | Finishes - flooring & painting | 2027-01-27 → 2026-11-05 (-83d) | 2027-04-05 → 2026-12-30 (-96d) | 58d → 46d |  | 48d → 131d |  |  |
| PP1-AGB-C1160 | MEP installation | 2027-02-04 → 2026-11-19 (-77d) | 2027-05-06 → 2027-02-02 (-93d) | 78d → 63d |  | 0d → 86d |  |  |
| PP1-AGB-C1180 | Testing & commissioning | 2027-05-07 → 2027-02-03 (-93d) | 2027-05-31 → 2027-02-22 (-98d) | 21d → 17d |  | 0d → 86d |  |  |
| PP1-AGB-C1190 | Building handover to client | 2027-05-31 → 2027-02-22 (-98d) | 2027-05-31 → 2027-02-22 (-98d) |  |  | 0d → 86d |  |  |
| PP1.GPB.E | **Engineering** | 2026-03-06 → 2026-02-06 (-28d) | 2026-06-11 → 2026-07-09 (+28d) |  |  |  |  |  |
| PP1-GPB-E1010 | Design basis & architectural layout | 2026-03-06 A → 2026-02-06 A (-28d) | 2026-04-08 A → 2026-03-25 A (-14d) | 21d → 30d |  |  | MS-1000 FS+40d → MS-1000 FS+20d |  |
| PP1-GPB-E1020 | Structural design & IFC drawings | 2026-03-18 A → 2026-02-17 A (-29d) | 2026-05-06 A → 2026-04-24 A (-12d) | 30d → 43d |  |  |  |  |
| PP1-GPB-E1030 | MEP design & drawings | 2026-04-15 A → 2026-03-31 A (-15d) | 2026-06-11 A → 2026-07-09 A (+28d) | 42d → 60d |  |  |  |  |
| PP1-GPB-E1040 | Drawing approval by client | 2026-05-15 A → 2026-05-18 A (+3d) | 2026-06-11 A → 2026-07-09 A (+28d) | 14d → 21d |  |  |  |  |
| PP1.GPB.P | **Procurement** | 2026-05-07 → 2026-05-01 (-6d) | 2026-10-30 → 2027-01-18 (+80d) |  |  |  |  |  |
| PP1-GPB-P1050 | Structural steel - PO placement | 2026-05-07 A → 2026-05-01 A (-6d) | 2026-05-21 A → 2026-05-26 A (+5d) | 13d → 19d |  |  |  |  |
| PP1-GPB-P1060 | Structural steel - fabrication & supply to site | 2026-05-28 A → 2026-06-01 A (+4d) | 2026-08-05 A → 2026-10-05 (+61d) | 58d → 83d | 100% → 65% | none → 64d |  |  |
| PP1-GPB-P1070 | MEP equipment - PO placement | 2026-06-13 A → 2026-07-15 A (+32d) | 2026-07-08 A → 2026-08-12 A (+35d) | 18d → 26d |  |  |  |  |
| PP1-GPB-P1080 | MEP equipment - manufacturing & delivery | 2026-07-09 A → 2026-08-14 A (+36d) | 2026-10-30 → 2027-01-18 (+80d) | 83d → 118d | 40% → 2% | 97d → 0d |  |  |
| PP1.GPB.C | **Construction** | 2026-02-27 → 2026-01-29 (-29d) | 2027-02-05 → 2027-06-03 (+118d) |  |  |  |  |  |
| PP1-GPB-C1090 | Site mobilisation & survey | 2026-02-27 A → 2026-01-29 A (-29d) | 2026-03-09 A → 2026-02-10 A (-27d) | 8d → 11d |  |  | MS-1000 FS+40d → MS-1000 FS+20d |  |
| PP1-GPB-C1100 | Excavation | 2026-03-30 A → 2026-03-03 A (-27d) | 2026-04-24 A → 2026-04-02 A (-22d) | 19d → 26d |  |  |  |  |
| PP1-GPB-C1110 | PCC & foundation concreting | 2026-04-13 A → 2026-03-14 A (-30d) | 2026-05-25 A → 2026-05-18 A (-7d) | 37d → 52d |  |  |  |  |
| PP1-GPB-C1120 | Plinth beam & backfilling | 2026-05-28 A → 2026-05-20 A (-8d) | 2026-06-22 A → 2026-06-27 A (+5d) | 20d → 29d |  |  |  |  |
| PP1-GPB-C1130 | Superstructure - RCC / steel erection | 2026-06-24 A → 2026-06-29 A (+5d) | 2026-09-10 → 2026-10-30 (+50d) | 66d → 94d | 89% → 58% | 117d → 79d |  |  |
| PP1-GPB-C1150 | Masonry & plastering | 2026-07-23 A → 2026-07-25 A (+2d) | 2026-09-22 → 2026-10-19 (+27d) | 41d → 59d | 57% → 43% | 137d → 106d |  |  |
| PP1-GPB-C1140 | Roofing & cladding | 2026-09-05 → 2026-10-26 (+51d) | 2026-10-13 → 2026-12-18 (+66d) | 32d → 46d |  | 150d → 79d |  |  |
| PP1-GPB-C1170 | Finishes - flooring & painting | 2026-10-14 → 2026-12-19 (+66d) | 2026-12-03 → 2027-03-02 (+89d) | 42d → 61d |  | 150d → 79d |  |  |
| PP1-GPB-C1160 | MEP installation | 2026-10-31 → 2027-01-19 (+80d) | 2027-01-14 → 2027-05-04 (+110d) | 63d → 89d |  | 97d → 0d |  |  |
| PP1-GPB-C1180 | Testing & commissioning | 2027-01-15 → 2027-05-05 (+110d) | 2027-02-05 → 2027-06-03 (+118d) | 18d → 26d |  | 97d → 0d |  |  |
| PP1-GPB-C1190 | Building handover to client | 2027-02-05 → 2027-06-03 (+118d) | 2027-02-05 → 2027-06-03 (+118d) |  |  | 97d → 0d |  |  |
| PP1.IFB.E | **Engineering** | 2026-04-10 → 2026-03-16 (-25d) | 2026-07-07 → 2026-08-05 (+29d) |  |  |  |  |  |

| ID | Task | Start | Finish | Duration | Complete | Total float | Predecessors |
| --- | --- | --- | --- | --- | --- | --- | --- |
| PP1-IFB-E1010 | Design basis & architectural layout | 2026-04-10 A → 2026-03-16 A (-25d) | 2026-05-13 A → 2026-04-28 A (-15d) | 20d → 30d |  |  | MS-1000 FS+60d → MS-1000 FS+40d |
| PP1-IFB-E1020 | Structural design & IFC drawings | 2026-04-27 A → 2026-04-01 A (-26d) | 2026-06-01 A → 2026-05-25 A (-7d) | 26d → 39d |  |  |  |
| PP1-IFB-E1030 | MEP design & drawings | 2026-05-22 A → 2026-05-11 A (-11d) | 2026-07-07 A → 2026-08-05 A (+29d) | 35d → 52d |  |  |  |
| PP1-IFB-E1040 | Drawing approval by client | 2026-06-12 A → 2026-06-17 A (+5d) | 2026-07-07 A → 2026-08-05 A (+29d) | 12d → 18d |  |  |  |
| PP1.IFB.P | **Procurement** | 2026-06-10 → 2026-06-04 (-6d) | 2026-10-31 → 2027-01-04 (+65d) |  |  |  |  |
| PP1-IFB-P1050 | Structural steel - PO placement | 2026-06-10 A → 2026-06-04 A (-6d) | 2026-06-23 A → 2026-06-25 A (+2d) | 12d → 19d |  |  |  |
| PP1-IFB-P1060 | Structural steel - fabrication & supply to site | 2026-07-01 A → 2026-07-03 A (+2d) | 2026-09-17 → 2026-11-17 (+61d) | 59d → 88d | 75% → 27% | 110d → 41d |  |
| PP1-IFB-P1070 | MEP equipment - PO placement | 2026-07-14 A → 2026-08-14 A (+31d) | 2026-07-29 A → 2026-09-12 (+45d) | 15d → 23d | 100% → 52% | none → 35d |  |
| PP1-IFB-P1080 | MEP equipment - manufacturing & delivery | 2026-08-07 A → 2026-09-14 (+38d) | 2026-10-31 → 2027-01-04 (+65d) | 62d → 93d | 18% → 0% | 115d → 35d |  |
| PP1.IFB.C | **Construction** | 2026-03-27 → 2026-03-02 (-25d) | 2027-01-14 → 2027-04-23 (+99d) |  |  |  |  |
| PP1-IFB-C1090 | Site mobilisation & survey | 2026-03-27 A → 2026-03-02 A (-25d) | 2026-04-01 A → 2026-03-12 A (-20d) | 5d → 8d |  |  | MS-1000 FS+60d → MS-1000 FS+40d |
| PP1-IFB-C1100 | Excavation | 2026-05-15 A → 2026-04-27 A (-18d) | 2026-06-09 A → 2026-05-26 A (-14d) | 18d → 27d |  |  |  |
| PP1-IFB-C1110 | PCC & foundation concreting | 2026-06-03 A → 2026-05-12 A (-22d) | 2026-07-09 A → 2026-06-27 A (-12d) | 29d → 43d |  |  |  |
| PP1-IFB-C1120 | Plinth beam & backfilling | 2026-07-21 A → 2026-07-08 A (-13d) | 2026-08-08 A → 2026-08-04 A (-4d) | 17d → 26d |  |  |  |
| PP1-IFB-C1130 | Superstructure - RCC / steel erection | 2026-08-19 A → 2026-08-17 A (-2d) | 2026-10-24 → 2026-12-11 (+48d) | 53d → 79d | 21% → 14% | 125d → 56d |  |
| PP1-IFB-C1160 | MEP installation | 2026-11-02 → 2026-08-26 A (-68d) | 2026-12-29 → 2027-03-30 (+91d) | 48d → 73d | 0% → 5% | 115d → 35d |  |
| PP1-IFB-C1150 | Masonry & plastering | 2026-09-11 → 2026-09-09 (-2d) | 2026-10-19 → 2026-11-05 (+17d) | 32d → 48d |  | 147d → 116d |  |
| PP1-IFB-C1140 | Roofing & cladding | 2026-10-19 → 2026-12-07 (+49d) | 2026-11-16 → 2027-01-16 (+61d) | 23d → 35d |  | 125d → 56d |  |
| PP1-IFB-C1170 | Finishes - flooring & painting | 2026-11-17 → 2027-01-18 (+62d) | 2027-01-02 → 2027-03-30 (+87d) | 40d → 60d |  | 125d → 56d |  |
| PP1-IFB-C1180 | Testing & commissioning | 2026-12-30 → 2027-03-31 (+91d) | 2027-01-14 → 2027-04-23 (+99d) | 14d → 21d |  | 115d → 35d |  |
| PP1-IFB-C1190 | Building handover to client | 2027-01-14 → 2027-04-23 (+99d) | 2027-01-14 → 2027-04-23 (+99d) |  |  | 115d → 35d |  |
| PP2.ASS.E | **Engineering** | 2026-05-14 → 2026-04-02 (-42d) | 2026-08-12 → 2026-06-10 (-63d) |  |  |  |  |
| PP2-ASS-E1010 | Design basis & architectural layout | 2026-05-14 A → 2026-04-02 A (-42d) | 2026-06-15 A → 2026-04-30 A (-46d) | 24d → 17d |  |  | MS-1000 FS+90d → MS-1000 FS+60d |
| PP2-ASS-E1020 | Structural design & IFC drawings | 2026-05-22 A → 2026-04-16 A (-36d) | 2026-07-16 A → 2026-05-27 A (-50d) | 35d → 25d |  |  |  |
| PP2-ASS-E1030 | MEP design & drawings | 2026-06-24 A → 2026-05-01 A (-54d) | 2026-08-12 A → 2026-06-10 A (-63d) | 38d → 27d |  |  |  |
| PP2-ASS-E1040 | Drawing approval by client | 2026-07-28 A → 2026-05-29 A (-60d) | 2026-08-12 A → 2026-06-10 A (-63d) | 13d → 9d |  |  |  |
| PP2.ASS.P | **Procurement** | 2026-07-17 → 2026-05-28 (-50d) | 2027-01-05 → 2026-09-28 (-99d) |  |  |  |  |
| PP2-ASS-P1050 | Structural steel - PO placement | 2026-07-17 A → 2026-05-28 A (-50d) | 2026-08-03 A → 2026-06-09 A (-55d) | 14d → 10d |  |  |  |
| PP2-ASS-P1060 | Structural steel - fabrication & supply to site | 2026-08-04 A → 2026-06-11 A (-54d) | 2026-11-04 → 2026-08-05 A (-91d) | 61d → 43d | 11% → 100% | 84d → none |  |
| PP2-ASS-P1070 | MEP equipment - PO placement | 2026-08-20 A → 2026-06-15 A (-66d) | 2026-09-14 → 2026-06-27 A (-79d) | 17d → 12d | 29% → 100% | 49d → none |  |
| PP2-ASS-P1080 | MEP equipment - manufacturing & delivery | 2026-09-15 → 2026-07-02 A (-75d) | 2027-01-05 → 2026-09-28 (-99d) | 93d → 67d | 0% → 64% | 49d → 154d |  |
| PP2.ASS.C | **Construction** | 2026-04-25 → 2026-03-18 (-38d) | 2027-04-03 → 2026-12-02 (-122d) |  |  |  |  |
| PP2-ASS-C1090 | Site mobilisation & survey | 2026-04-25 A → 2026-03-18 A (-38d) | 2026-05-02 A → 2026-03-23 A (-40d) | 7d → 5d |  |  | MS-1000 FS+90d → MS-1000 FS+60d |
| PP2-ASS-C1100 | Excavation | 2026-06-04 A → 2026-04-29 A (-36d) | 2026-07-01 A → 2026-05-20 A (-42d) | 24d → 17d |  |  |  |
| PP2-ASS-C1110 | PCC & foundation concreting | 2026-06-16 A → 2026-05-09 A (-38d) | 2026-07-27 A → 2026-06-03 A (-54d) | 30d → 22d |  |  |  |
| PP2-ASS-C1120 | Plinth beam & backfilling | 2026-08-03 A → 2026-06-04 A (-60d) | 2026-08-27 A → 2026-06-22 A (-66d) | 21d → 15d |  |  |  |
| PP2-ASS-C1130 | Superstructure - RCC / steel erection | 2026-09-01 → 2026-07-04 A (-59d) | 2026-11-23 → 2026-09-03 (-81d) | 69d → 50d | 0% → 94% | 99d → 148d |  |
| PP2-ASS-C1150 | Masonry & plastering | 2026-09-24 → 2026-07-31 A (-55d) | 2026-11-20 → 2026-09-17 (-64d) | 47d → 33d | 0% → 61% | 124d → 168d |  |
| PP2-ASS-C1140 | Roofing & cladding | 2026-11-18 → 2026-09-01 (-78d) | 2026-12-21 → 2026-09-23 (-89d) | 29d → 20d |  | 99d → 185d |  |
| PP2-ASS-C1170 | Finishes - flooring & painting | 2026-12-22 → 2026-09-24 (-89d) | 2027-02-03 → 2026-10-26 (-100d) | 36d → 26d |  | 99d → 185d |  |
| PP2-ASS-C1160 | MEP installation | 2027-01-06 → 2026-09-29 (-99d) | 2027-03-16 → 2026-11-19 (-117d) | 59d → 42d |  | 49d → 154d |  |
| PP2-ASS-C1180 | Testing & commissioning | 2027-03-17 → 2026-11-20 (-117d) | 2027-04-03 → 2026-12-02 (-122d) | 15d → 11d |  | 49d → 154d |  |
| PP2-ASS-C1190 | Building handover to client | 2027-04-03 → 2026-12-02 (-122d) | 2027-04-03 → 2026-12-02 (-122d) |  |  | 49d → 154d |  |
| PP2.GPB.E | **Engineering** | 2026-07-02 → 2026-05-07 (-56d) | 2026-09-08 → 2026-08-31 (-8d) |  |  |  |  |
| PP2-GPB-E1010 | Design basis & architectural layout | 2026-07-02 A → 2026-05-07 A (-56d) | 2026-07-23 A → 2026-06-11 A (-42d) | 14d → 26d |  |  | MS-1000 FS+120d → MS-1000 FS+80d |
| PP2-GPB-E1020 | Structural design & IFC drawings | 2026-07-10 A → 2026-05-20 A (-51d) | 2026-08-11 A → 2026-07-09 A (-33d) | 21d → 39d |  |  |  |
| PP2-GPB-E1030 | MEP design & drawings | 2026-07-29 A → 2026-06-19 A (-40d) | 2026-09-08 → 2026-08-31 A (-8d) | 29d → 53d | 79% → 100% | 83d → none |  |
| PP2-GPB-E1040 | Drawing approval by client | 2026-08-12 A → 2026-07-31 A (-12d) | 2026-09-08 → 2026-08-31 A (-8d) | 9d → 17d | 89% → 100% | 183d → none |  |
| PP2.GPB.P | **Procurement** | 2026-08-14 → 2026-07-13 (-32d) | 2026-11-28 → 2027-01-21 (+54d) |  |  |  |  |
| PP2-GPB-P1050 | Structural steel - PO placement | 2026-08-14 A → 2026-07-13 A (-32d) | 2026-08-25 A → 2026-08-04 A (-21d) | 9d → 17d |  |  |  |
| PP2-GPB-P1060 | Structural steel - fabrication & supply to site | 2026-08-29 A → 2026-08-08 A (-21d) | 2026-10-21 → 2026-11-18 (+28d) | 40d → 72d | 0% → 10% | 125d → 53d |  |
| PP2-GPB-P1070 | MEP equipment - PO placement | 2026-09-09 → 2026-09-01 (-8d) | 2026-09-21 → 2026-09-22 (+1d) | 11d → 19d |  | 100d → 12d |  |
| PP2-GPB-P1080 | MEP equipment - manufacturing & delivery | 2026-09-22 → 2026-09-23 (+1d) | 2026-11-28 → 2027-01-21 (+54d) | 56d → 100d |  | 100d → 12d |  |
| PP2.GPB.C | **Construction** | 2026-05-29 → 2026-04-17 (-42d) | 2027-02-02 → 2027-05-20 (+107d) |  |  |  |  |
| PP2-GPB-C1090 | Site mobilisation & survey | 2026-05-29 A → 2026-04-17 A (-42d) | 2026-06-03 A → 2026-04-30 A (-34d) | 5d → 10d |  |  | MS-1000 FS+120d → MS-1000 FS+80d |
| PP2-GPB-C1100 | Excavation | 2026-07-24 A → 2026-06-05 A (-49d) | 2026-08-10 A → 2026-07-07 A (-34d) | 15d → 27d |  |  |  |
| PP2-GPB-C1110 | PCC & foundation concreting | 2026-08-06 A → 2026-06-17 A (-50d) | 2026-09-17 → 2026-08-24 A (-24d) | 28d → 50d | 58% → 100% | 110d → none |  |
| PP2-GPB-C1120 | Plinth beam & backfilling | 2026-09-18 → 2026-08-28 A (-21d) | 2026-10-06 → 2026-10-01 (-5d) | 15d → 26d | 0% → 10% | 110d → 41d |  |
| PP2-GPB-C1130 | Superstructure - RCC / steel erection | 2026-10-07 → 2026-10-03 (-4d) | 2026-11-27 → 2027-01-04 (+38d) | 43d → 77d |  | 110d → 41d |  |
| PP2-GPB-C1150 | Masonry & plastering | 2026-08-26 A → 2026-10-28 (+63d) | 2026-12-07 → 2027-01-07 (+31d) | 33d → 60d | 5% → 0% | 114d → 70d |  |
| PP2-GPB-C1140 | Roofing & cladding | 2026-11-23 → 2026-12-30 (+37d) | 2026-12-15 → 2027-02-11 (+58d) | 20d → 37d |  | 110d → 41d |  |
| PP2-GPB-C1160 | MEP installation | 2026-08-26 A → 2027-01-22 (+149d) | 2027-01-16 → 2027-04-23 (+97d) | 43d → 77d | 5% → 0% | 100d → 12d |  |
| PP2-GPB-C1170 | Finishes - flooring & painting | 2026-12-16 → 2027-02-12 (+58d) | 2027-01-20 → 2027-04-16 (+86d) | 30d → 54d |  | 110d → 41d |  |
| PP2-GPB-C1180 | Testing & commissioning | 2027-01-18 → 2027-04-24 (+96d) | 2027-02-02 → 2027-05-20 (+107d) | 13d → 23d |  | 100d → 12d |  |
| PP2-GPB-C1190 | Building handover to client | 2027-02-02 → 2027-05-20 (+107d) | 2027-02-02 → 2027-05-20 (+107d) |  |  | 100d → 12d |  |
